# Proyect Proyecto Interfase VOIP_obs

Schedule from MS Project, 2017-05-10 to 2017-07-18, A marks actual dates.

## Calendars

- Estándar: Mon-Fri 09:00-13:00, 15:00-19:00; Sat-Sun off.

## Schedule

| ID | WBS | Task | Duration | Start | Finish | Predecessors | Complete | Remaining | Total slack | Free slack | Work | Actual work |
| --- | --- | --- | --- | --- | --- | --- | --- | --- | --- | --- | --- | --- |
| 1 | 1 | **Cronograma de Proyecto Interfase VOIP 0.3** | 49.25d | 2017-05-10 09:00 A | 2017-07-18 11:00 |  | 18% | 40.62d | 0d |  | 375.5h | 66h |
| 2 | 1.1 | **Proceso de gestion** | 15.38d | 2017-05-10 09:00 A | 2017-05-31 12:00 |  | 46% | 8.25d | 5.62d | 0d | 123h | 57h |
| 3 | 1.1.1 | **Inicio** | 0.62d | 2017-05-10 09:00 | 2017-05-10 16:00 |  |  |  | 20.38d |  | 5h |  |
| 4 | 1.1.1.1 | Revision de metodologia de trabajo | 5h | 2017-05-10 09:00 | 2017-05-10 16:00 |  |  |  | 21.19d |  | 5h |  |
| 5 | 1.1.2 | **Planificacion del plan de proyecto** | 5.25d | 2017-05-10 16:00 A | 2017-05-17 18:00 A | 3 | 100% |  |  |  | 42h | 42h |
| 6 | 1.1.2.1 | **Elaboracion del plan de proyecto** | 3.88d | 2017-05-10 16:00 A | 2017-05-16 13:00 A |  | 100% |  |  |  | 31h | 31h |
| 7 | 1.1.2.1.1 | Definir Nombre del Proyecto | 2h | 2017-05-10 16:00 A | 2017-05-10 18:00 A |  | 100% |  |  |  | 2h | 2h |
| 8 | 1.1.2.1.2 | Definir Objetivos de Proyecto | 4h | 2017-05-10 18:00 A | 2017-05-11 12:00 A | 7 | 100% |  |  |  | 4h | 4h |
| 9 | 1.1.2.1.3 | Elaboración de Cronograma Detallado | 4h | 2017-05-11 12:00 A | 2017-05-11 18:00 A | 8 | 100% |  |  |  | 4h | 4h |
| 10 | 1.1.2.1.4 | Gestión de Comunicaciones | 3h | 2017-05-11 18:00 A | 2017-05-12 11:00 A | 9 | 100% |  |  |  | 3h | 3h |
| 11 | 1.1.2.1.5 | Necesidades del Proyecto | 3h | 2017-05-12 11:00 A | 2017-05-12 16:00 A | 10 | 100% |  |  |  | 3h | 3h |
| 12 | 1.1.2.1.6 | Identificación de Riesgos del Proyecto | 3h | 2017-05-12 16:00 A | 2017-05-12 19:00 A | 11 | 100% |  |  |  | 3h | 3h |
| 13 | 1.1.2.1.7 | Elaborar Documento de Riesgos del Proyecto | 3h | 2017-05-15 09:00 A | 2017-05-15 12:00 A | 12 | 100% |  |  |  | 3h | 3h |
| 14 | 1.1.2.1.8 | Elaborar Documento Plan de Proyecto | 8h | 2017-05-15 12:00 A | 2017-05-16 12:00 A | 13 | 100% |  |  |  | 8h | 8h |
| 15 | 1.1.2.1.9 | Traspaso de Información | 1h | 2017-05-16 12:00 A | 2017-05-16 13:00 A | 14 | 100% |  |  |  | 1h | 1h |
| 16 | 1.1.2.2 | **Revision interna del plan de proyecto** | 0.62d | 2017-05-16 15:00 A | 2017-05-17 10:00 A | 6 | 100% |  |  |  | 5h | 5h |
| 17 | 1.1.2.2.1 | Revisión de Plan de Proyecto por el equipo del Proyecto | 1h | 2017-05-16 15:00 A | 2017-05-16 16:00 A |  | 100% |  |  |  | 1h | 1h |
| 18 | 1.1.2.2.2 | Ajustes al Plan de Proyecto | 1h | 2017-05-16 16:00 A | 2017-05-16 17:00 A | 17 | 100% |  |  |  | 1h | 1h |
| 19 | 1.1.2.2.3 | Elaborar Acta de REVISION INTERNA del PLAN DE PROYECTO | 2h | 2017-05-16 17:00 A | 2017-05-16 19:00 A | 18 | 100% |  |  |  | 2h | 2h |
| 20 | 1.1.2.2.4 | Traspaso de Información | 1h | 2017-05-17 09:00 A | 2017-05-17 10:00 A | 19 | 100% |  |  |  | 1h | 1h |
| 21 | 1.1.2.3 | **Gestion de la configuracion** | 0.75d | 2017-05-17 10:00 A | 2017-05-17 18:00 A | 16 | 100% |  |  |  | 6h | 6h |
| 22 | 1.1.2.3.1 | Establecer Repositorio de Datos | 3h | 2017-05-17 10:00 A | 2017-05-17 13:00 A |  | 100% |  |  |  | 3h | 3h |
| 23 | 1.1.2.3.2 | Asignar Gestor de Configuración | 2h | 2017-05-17 15:00 A | 2017-05-17 17:00 A | 22 | 100% |  |  |  | 2h | 2h |
| 24 | 1.1.2.3.3 | Elaborar Solicitud de Accesos | 1h | 2017-05-17 17:00 A | 2017-05-17 18:00 A | 23 | 100% |  |  |  | 1h | 1h |

| ID | WBS | Task | Duration | Start | Finish | Predecessors | Complete | Remaining | Total slack | Free slack | Work | Actual work |
| --- | --- | --- | --- | --- | --- | --- | --- | --- | --- | --- | --- | --- |
| 25 | 1.1.3 | **Asignacion, Ejecucion, Seguimiento y control** | 7.88d | 2017-05-17 18:00 A | 2017-05-29 17:00 | 5 | 24% | 6d | 5.62d | 0d | 63h | 15h |
| 26 | 1.1.3.1 | **Desarrollo del Área de Proceso PP- PMC** | 1.88d | 2017-05-17 18:00 A | 2017-05-19 17:00 A |  | 100% |  |  |  | 15h | 15h |
| 27 | 1.1.3.1.1 | Elaborar Plantilla de Reunión Externa Mensual | 2h | 2017-05-17 18:00 A | 2017-05-18 10:00 A |  | 100% |  |  |  | 2h | 2h |
| 28 | 1.1.3.1.2 | Elaborar Plantilla de Gestion de Riesgos | 2h | 2017-05-18 10:00 A | 2017-05-18 12:00 A | 27 | 100% |  |  |  | 2h | 2h |
| 29 | 1.1.3.1.3 | Elaborar Plantilla de Informe de Avances Quincenales | 2h | 2017-05-18 12:00 A | 2017-05-18 16:00 A | 28 | 100% |  |  |  | 2h | 2h |
| 30 | 1.1.3.1.4 | Elaborar Plantillas de Actas de Reunión Interna Quincenal | 2h | 2017-05-18 16:00 A | 2017-05-18 18:00 A | 29 | 100% |  |  |  | 2h | 2h |
| 31 | 1.1.3.1.5 | Elaborar Formato de Aceptación de Entregables | 2h | 2017-05-18 18:00 A | 2017-05-19 10:00 A | 30 | 100% |  |  |  | 2h | 2h |
| 32 | 1.1.3.1.6 | Elaborar Documento Gestión de Procesos PP-PMC | 4h | 2017-05-19 10:00 A | 2017-05-19 16:00 A | 31 | 100% |  |  |  | 4h | 4h |
| 33 | 1.1.3.1.7 | Traspaso de Información | 1h | 2017-05-19 16:00 A | 2017-05-19 17:00 A | 32 | 100% |  |  |  | 1h | 1h |
| 34 | 1.1.3.2 | **Desarrollo del Área de Proceso REQM** | 1.12d | 2017-05-19 17:00 | 2017-05-22 18:00 | 26 |  |  | 5.62d | 0d | 9h |  |
| 35 | 1.1.3.2.1 | Elaborar Formato de Solicitud a Cambios a Requerimientos | 2h | 2017-05-19 17:00 | 2017-05-19 19:00 |  |  |  | 6.44d | 0d | 2h |  |
| 36 | 1.1.3.2.2 | Elaborar Formato de Matriz de Trazabilidad de Requerimientos | 2h | 2017-05-22 09:00 | 2017-05-22 11:00 | 35 |  |  | 6.44d | 0d | 2h |  |
| 37 | 1.1.3.2.3 | Elaborar Formato de Registro de Cambios a Requerimientos | 2h | 2017-05-22 11:00 | 2017-05-22 13:00 | 36 |  |  | 6.44d | 0d | 2h |  |
| 38 | 1.1.3.2.4 | Elaborar Documento de Proceso de Gestión de cambios de Requerimientos | 2h | 2017-05-22 15:00 | 2017-05-22 17:00 | 37 |  |  | 6.44d | 0d | 2h |  |
| 39 | 1.1.3.2.5 | Traspaso de Información | 1h | 2017-05-22 17:00 | 2017-05-22 18:00 | 38 |  |  | 6.44d |  | 1h |  |
| 40 | 1.1.3.3 | **Desarrollo del Área de Proceso PPQA** | 1.88d | 2017-05-22 18:00 | 2017-05-24 17:00 | 34 |  |  | 5.62d | 0d | 15h |  |
| 41 | 1.1.3.3.1 | Elaborar Formato de CheckList de Aseguramiento de la Calidad | 2h | 2017-05-22 18:00 | 2017-05-23 10:00 |  |  |  | 6.44d | 0d | 2h |  |
| 42 | 1.1.3.3.2 | Elaborar Herramienta de Gestión de Aseguramiento de la Calidad | 2h | 2017-05-23 10:00 | 2017-05-23 12:00 | 41 |  |  | 6.44d | 0d | 2h |  |
| 43 | 1.1.3.3.3 | Elaborar Plantilla de Informe General de QA | 2h | 2017-05-23 12:00 | 2017-05-23 16:00 | 42 |  |  | 6.44d | 0d | 2h |  |
| 44 | 1.1.3.3.4 | Elaborar Formato de Solicitud de Control de Calidad del Producto | 2h | 2017-05-23 16:00 | 2017-05-23 18:00 | 43 |  |  | 6.44d | 0d | 2h |  |
| 45 | 1.1.3.3.5 | Elaborar documento de Proceso de Aseguramiento de la calidad | 6h | 2017-05-23 18:00 | 2017-05-24 16:00 | 44 |  |  | 6.44d | 0d | 6h |  |
| 46 | 1.1.3.3.6 | Traspaso de Información | 1h | 2017-05-24 16:00 | 2017-05-24 17:00 | 45 |  |  | 6.44d |  | 1h |  |
| 47 | 1.1.3.4 | **Desarrollo del Área de Proceso MA** | 2.12d | 2017-05-24 17:00 | 2017-05-26 18:00 | 40 |  |  | 5.62d | 0d | 17h |  |
| 48 | 1.1.3.4.1 | Elaborar Formato de Ficha de Métricas de Numero de N Conformidades de Producto | 3h | 2017-05-24 17:00 | 2017-05-25 10:00 |  |  |  | 6.44d | 0d | 3h |  |
| 49 | 1.1.3.4.2 | Elaborar Formato de Ficha de Métricas de Índice de Cambios de Ítems de Configuración | 3h | 2017-05-25 10:00 | 2017-05-25 13:00 | 48 |  |  | 6.44d | 0d | 3h |  |
| 50 | 1.1.3.4.3 | Elaborar Formato de Ficha de Métricas de Volatilidad de Requerimientos | 3h | 2017-05-25 15:00 | 2017-05-25 18:00 | 49 |  |  | 6.44d | 0d | 3h |  |
| 51 | 1.1.3.4.4 | Elaborar Formato de Ficha de Métricas de Exposición al Riesgo | 3h | 2017-05-25 18:00 | 2017-05-26 11:00 | 50 |  |  | 6.44d | 0d | 3h |  |
| 52 | 1.1.3.4.5 | Elaborar Formato de Tablero de Métricas | 2h | 2017-05-26 11:00 | 2017-05-26 13:00 | 51 |  |  | 6.44d | 0d | 2h |  |
| 53 | 1.1.3.4.6 | Elaborar Documento de Proceso de Medicion de Métricas | 2h | 2017-05-26 15:00 | 2017-05-26 17:00 | 52 |  |  | 6.44d | 0d | 2h |  |
| 54 | 1.1.3.4.7 | Traspaso de Información | 1h | 2017-05-26 17:00 | 2017-05-26 18:00 | 53 |  |  | 6.44d |  | 1h |  |

| ID | WBS | Task | Duration | Start | Finish | Predecessors | Total slack | Free slack | Work |
| --- | --- | --- | --- | --- | --- | --- | --- | --- | --- |
| 55 | 1.1.3.5 | **Desarrollo del Área de Proceso CM** | 0.88d | 2017-05-26 18:00 | 2017-05-29 17:00 | 47 | 5.62d |  | 7h |
| 56 | 1.1.3.5.1 | Elaborar Formato de Registro de Ítems de Configuración | 2h | 2017-05-26 18:00 | 2017-05-29 10:00 |  | 6.44d | 0d | 2h |
| 57 | 1.1.3.5.2 | Elaborar Formato de Solicitud de Accesos | 2h | 2017-05-29 10:00 | 2017-05-29 12:00 | 56 | 6.44d | 0d | 2h |
| 58 | 1.1.3.5.3 | Elaborar Documento de Proceso de Gestión de Configuración | 2h | 2017-05-29 12:00 | 2017-05-29 16:00 | 57 | 6.44d | 0d | 2h |
| 59 | 1.1.3.5.4 | Traspaso de Información | 1h | 2017-05-29 16:00 | 2017-05-29 17:00 | 58 | 6.44d |  | 1h |
| 60 | 1.1.4 | **Cierre** | 1.62d | 2017-05-29 17:00 | 2017-05-31 12:00 | 25 | 5.62d |  | 13h |
| 61 | 1.1.4.1 | **Cierre de Proyecto** | 1.12d | 2017-05-29 17:00 | 2017-05-30 18:00 |  | 5.62d | 0d | 9h |
| 62 | 1.1.4.1.1 | Revisión de Entregables del Proyecto | 5h | 2017-05-29 17:00 | 2017-05-30 12:00 |  | 6.44d | 0d | 5h |
| 63 | 1.1.4.1.2 | Elaboración del Acta de Aceptación y Cierre del Proyecto | 3h | 2017-05-30 12:00 | 2017-05-30 17:00 | 62 | 6.44d | 0d | 3h |
| 64 | 1.1.4.1.3 | Traspaso de Información | 1h | 2017-05-30 17:00 | 2017-05-30 18:00 | 63 | 6.44d |  | 1h |
| 65 | 1.1.4.2 | **Relatorio de Proyecto** | 0.5d | 2017-05-30 18:00 | 2017-05-31 12:00 | 61 | 5.62d |  | 4h |
| 66 | 1.1.4.2.1 | Elaborar Relatorio de Proyecto | 1h | 2017-05-30 18:00 | 2017-05-30 19:00 |  | 6.44d | 0d | 1h |
| 67 | 1.1.4.2.2 | Revisión y ajustes de Relatorio por el equipo del Proyecto | 1h | 2017-05-31 09:00 | 2017-05-31 10:00 | 66 | 6.44d | 0d | 1h |
| 68 | 1.1.4.2.3 | Revisión de Relatorio | 1h | 2017-05-31 10:00 | 2017-05-31 11:00 | 67 | 6.44d | 0d | 1h |
| 69 | 1.1.4.2.4 | Traspaso de Información | 1h | 2017-05-31 11:00 | 2017-05-31 12:00 | 68 | 6.44d |  | 1h |
| 70 | 1.2 | **Proceso de ingenieria** | 28.25d | 2017-05-31 12:00 | 2017-07-10 16:00 | 2 | 5.62d |  | 225h |
| 71 | 1.2.1 | **Requerimientos** | 1.5d | 2017-05-31 12:00 | 2017-06-01 18:00 |  | 5.62d | 0d | 12h |
| 72 | 1.2.1.1 | Desarrollo de plan de proyecto | 6h | 2017-05-31 12:00 | 2017-06-01 10:00 |  | 6.44d | 0d | 6h |
| 73 | 1.2.1.2 | Elaboracion de matriz de trazabilidad de requerimiento | 2h | 2017-06-01 10:00 | 2017-06-01 12:00 | 72 | 6.44d | 0d | 2h |
| 74 | 1.2.1.3 | Elaborar lista maestra de requerimientos | 2h | 2017-06-01 12:00 | 2017-06-01 16:00 | 73 | 6.44d | 0d | 2h |
| 75 | 1.2.1.4 | Trapaso de informacion | 2h | 2017-06-01 16:00 | 2017-06-01 18:00 | 74 | 6.44d |  | 2h |
| 76 | 1.2.2 | **Analisis** | 1.75d | 2017-06-01 18:00 | 2017-06-05 16:00 | 71 | 5.62d | 0d | 14h |
| 77 | 1.2.2.1 | Revision de matriz de trasabilidad de requerimientos | 1h | 2017-06-01 18:00 | 2017-06-01 19:00 |  | 6.44d | 0d | 1h |
| 78 | 1.2.2.2 | Elaborar documento de analisis | 3h | 2017-06-02 09:00 | 2017-06-02 12:00 | 77 | 6.44d | 0d | 3h |

| ID | WBS | Task | Duration | Start | Finish | Predecessors | Total slack | Free slack | Work |
| --- | --- | --- | --- | --- | --- | --- | --- | --- | --- |
| 79 | 1.2.2.3 | **Casos de uso** | 1.25d | 2017-06-02 12:00 | 2017-06-05 16:00 | 78 | 5.62d |  | 10h |
| 80 | 1.2.2.3.1 | Caso de uso de cliente | 2h | 2017-06-02 12:00 | 2017-06-02 16:00 |  | 6.44d | 0d | 2h |
| 81 | 1.2.2.3.2 | Caso de uso de distribuidor | 2h | 2017-06-02 16:00 | 2017-06-02 18:00 | 80 | 6.44d | 0d | 2h |
| 82 | 1.2.2.3.3 | Caso de uso de administrador | 2h | 2017-06-02 18:00 | 2017-06-05 10:00 | 81 | 6.44d | 0d | 2h |
| 83 | 1.2.2.3.4 | Actualizar los glosarios | 4h | 2017-06-05 10:00 | 2017-06-05 16:00 | 82 | 6.44d |  | 4h |
| 84 | 1.2.3 | **Diseño** | 0.62d | 2017-06-05 16:00 | 2017-06-06 11:00 | 76 | 5.62d | 0d | 5h |
| 85 | 1.2.3.1 | Elaborar documento de diseño | 3h | 2017-06-05 16:00 | 2017-06-05 19:00 |  | 6.44d | 0d | 3h |
| 86 | 1.2.3.2 | Revision de matriz de trasabilidad de requerimientos | 1h | 2017-06-06 09:00 | 2017-06-06 10:00 | 85 | 6.44d | 0d | 1h |
| 87 | 1.2.3.3 | Traspaso de informacion | 1h | 2017-06-06 10:00 | 2017-06-06 11:00 | 86 | 6.44d |  | 1h |
| 88 | 1.2.4 | **Construccion** | 19.38d | 2017-06-06 11:00 | 2017-07-03 16:00 | 84 | 5.62d |  | 154h |
| 89 | 1.2.4.1 | **Modulo de clientes** | 3.38d | 2017-06-06 11:00 | 2017-06-09 16:00 |  | 5.62d | 0d | 26h |
| 90 | 1.2.4.1.1 | **Reporte de llamadas** | 1d | 2017-06-06 11:00 | 2017-06-07 11:00 |  | 5.62d | 0d | 12h |
| 91 | 1.2.4.1.1.1 | Listar llamadas | 2h | 2017-06-06 11:00 | 2017-06-06 13:00 |  | 6.44d | 0d | 6h |
| 92 | 1.2.4.1.1.2 | Filtro Anexos | 2h | 2017-06-06 15:00 | 2017-06-06 17:00 | 91 | 6.44d | 0d | 2h |
| 93 | 1.2.4.1.1.3 | Filtro Periodo | 2h | 2017-06-06 17:00 | 2017-06-06 19:00 | 92 | 6.44d | 0d | 2h |
| 94 | 1.2.4.1.1.4 | Exportacion Excel | 2h | 2017-06-07 09:00 | 2017-06-07 11:00 | 93 | 6.44d |  | 2h |
| 95 | 1.2.4.1.2 | **Reporte de recargas** | 1.25d | 2017-06-07 11:00 | 2017-06-08 13:00 | 90 | 5.62d | 0d | 10h |
| 96 | 1.2.4.1.2.1 | Listar recargas | 6h | 2017-06-07 11:00 | 2017-06-07 19:00 |  | 6.44d | 0d | 6h |
| 97 | 1.2.4.1.2.2 | Filtro periodo | 2h | 2017-06-08 09:00 | 2017-06-08 11:00 | 96 | 6.44d | 0d | 2h |
| 98 | 1.2.4.1.2.3 | Exportacion Excel | 2h | 2017-06-08 11:00 | 2017-06-08 13:00 | 97 | 6.44d |  | 2h |
| 99 | 1.2.4.1.3 | **Reporte de Anexos** | 0.5d | 2017-06-08 15:00 | 2017-06-08 19:00 | 95 | 5.62d | 0d | 4h |
| 100 | 1.2.4.1.3.1 | Lista de anexos | 4h | 2017-06-08 15:00 | 2017-06-08 19:00 |  | 6.44d |  | 4h |
| 101 | 1.2.4.1.4 | Pruebas unitarias | 5h | 2017-06-09 09:00 | 2017-06-09 16:00 | 99 | 6.44d |  |  |
| 102 | 1.2.4.2 | **Modulo Distribuidor** | 9d | 2017-06-09 16:00 | 2017-06-22 16:00 | 89 | 5.62d | 0d | 70h |
| 103 | 1.2.4.2.1 | **SubModulo Cliente** | 2.75d | 2017-06-09 16:00 | 2017-06-14 12:00 |  | 5.62d | 0d | 22h |
| 104 | 1.2.4.2.1.1 | Listar Clientes | 6h | 2017-06-09 16:00 | 2017-06-12 12:00 |  | 6.44d | 0d | 6h |
| 105 | 1.2.4.2.1.2 | Creacion de clientes | 6h | 2017-06-12 12:00 | 2017-06-13 10:00 | 104 | 6.44d | 0d | 6h |
| 106 | 1.2.4.2.1.3 | Edicion de clientes | 6h | 2017-06-13 10:00 | 2017-06-13 18:00 | 105 | 6.44d | 0d | 6h |
| 107 | 1.2.4.2.1.4 | Eliminacion de clientes | 4h | 2017-06-13 18:00 | 2017-06-14 12:00 | 106 | 6.44d |  | 4h |

| ID | WBS | Task | Duration | Start | Finish | Predecessors | Total slack | Free slack | Work |
| --- | --- | --- | --- | --- | --- | --- | --- | --- | --- |
| 108 | 1.2.4.2.2 | **Submodulo de Anexos** | 3.75d | 2017-06-14 12:00 | 2017-06-20 10:00 | 103 | 5.62d | 0d | 28h |
| 109 | 1.2.4.2.2.1 | Listar Anexos | 6h | 2017-06-14 12:00 | 2017-06-15 10:00 |  | 6.44d | 0d | 6h |
| 110 | 1.2.4.2.2.2 | Creacion de anexos | 6h | 2017-06-15 10:00 | 2017-06-15 18:00 | 109 | 6.44d | 0d | 6h |
| 111 | 1.2.4.2.2.3 | Edicion de anexos | 6h | 2017-06-15 18:00 | 2017-06-16 16:00 | 110 | 6.44d | 0d | 6h |
| 112 | 1.2.4.2.2.4 | Eliminacion de anexos | 6h | 2017-06-16 16:00 | 2017-06-19 12:00 | 111 | 6.44d | 0d | 6h |
| 113 | 1.2.4.2.2.5 | Asignacion de anexos | 6h | 2017-06-19 12:00 | 2017-06-20 10:00 | 112 | 6.44d |  | 4h |
| 114 | 1.2.4.2.3 | **SubModulo de Recargas** | 1.88d | 2017-06-20 10:00 | 2017-06-21 19:00 | 108 | 5.62d | 0d | 15h |
| 115 | 1.2.4.2.3.1 | Lista de recargas | 6h | 2017-06-20 10:00 | 2017-06-20 18:00 |  | 6.44d | 0d | 6h |
| 116 | 1.2.4.2.3.2 | Registro de recargas | 5h | 2017-06-20 18:00 | 2017-06-21 13:00 | 115 | 6.44d | 0d | 5h |
| 117 | 1.2.4.2.3.3 | Filtro periodo | 4h | 2017-06-21 15:00 | 2017-06-21 19:00 | 116 | 6.44d |  | 4h |
| 118 | 1.2.4.2.4 | Pruebas Unitarias | 5h | 2017-06-22 09:00 | 2017-06-22 16:00 | 114 | 6.44d |  | 5h |
| 119 | 1.2.4.3 | **Modulo Administrador** | 7d | 2017-06-22 16:00 | 2017-07-03 16:00 | 102 | 5.62d | 0d | 58h |
| 120 | 1.2.4.3.1 | **SubModulo Cliente** | 1.75d | 2017-06-22 16:00 | 2017-06-26 12:00 |  | 5.62d | 0d | 14h |
| 121 | 1.2.4.3.1.1 | Listar Clientes | 4h | 2017-06-22 16:00 | 2017-06-23 10:00 |  | 6.44d | 0d | 4h |
| 122 | 1.2.4.3.1.2 | Creacion de clientes | 4h | 2017-06-23 10:00 | 2017-06-23 16:00 | 121 | 6.44d | 0d | 4h |
| 123 | 1.2.4.3.1.3 | Edicion de clientes | 4h | 2017-06-23 16:00 | 2017-06-26 10:00 | 122 | 6.44d | 0d | 4h |
| 124 | 1.2.4.3.1.4 | Eliminacion de clientes | 2h | 2017-06-26 10:00 | 2017-06-26 12:00 | 123 | 6.44d |  | 2h |
| 125 | 1.2.4.3.2 | **SubModulo Distribuidor** | 2.5d | 2017-06-26 12:00 | 2017-06-28 18:00 | 120 | 5.62d | 0d | 18h |
| 126 | 1.2.4.3.2.1 | Listar Distribuidor | 6h | 2017-06-26 12:00 | 2017-06-27 10:00 |  | 6.44d | 0d | 6h |
| 127 | 1.2.4.3.2.2 | Creacion de Distribuidor | 6h | 2017-06-27 10:00 | 2017-06-27 18:00 | 126 | 6.44d | 0d | 4h |
| 128 | 1.2.4.3.2.3 | Edicion de distribuidor | 4h | 2017-06-27 18:00 | 2017-06-28 12:00 | 127 | 6.44d | 0d | 4h |
| 129 | 1.2.4.3.2.4 | Eliminacion de distribuidor | 4h | 2017-06-28 12:00 | 2017-06-28 18:00 | 128 | 6.44d |  | 4h |
| 130 | 1.2.4.3.3 | **Submodulo de Anexos** | 1.5d | 2017-06-28 18:00 | 2017-06-30 12:00 | 125 | 5.62d | 0d | 12h |
| 131 | 1.2.4.3.3.1 | Listar Anexos | 4h | 2017-06-28 18:00 | 2017-06-29 12:00 |  | 6.44d | 0d | 4h |
| 132 | 1.2.4.3.3.2 | Creacion de anexos | 2h | 2017-06-29 12:00 | 2017-06-29 16:00 | 131 | 6.44d | 0d | 2h |
| 133 | 1.2.4.3.3.3 | Edicion de anexos | 2h | 2017-06-29 16:00 | 2017-06-29 18:00 | 132 | 6.44d | 0d | 2h |
| 134 | 1.2.4.3.3.4 | Eliminacion de anexos | 2h | 2017-06-29 18:00 | 2017-06-30 10:00 | 133 | 6.44d | 0d | 2h |
| 135 | 1.2.4.3.3.5 | Asignacion de anexos | 2h | 2017-06-30 10:00 | 2017-06-30 12:00 | 134 | 6.44d |  | 2h |

| ID | WBS | Task | Duration | Start | Finish | Predecessors | Complete | Total slack | Free slack | Work | Actual work |
| --- | --- | --- | --- | --- | --- | --- | --- | --- | --- | --- | --- |
| 136 | 1.2.4.3.4 | **SubModulo de Recargas** | 1.25d | 2017-06-30 12:00 | 2017-07-03 16:00 | 130 |  | 5.62d |  | 14h |  |
| 137 | 1.2.4.3.4.1 | Lista de recargas | 6h | 2017-06-30 12:00 | 2017-07-03 10:00 |  |  | 6.44d | 0d | 6h |  |
| 138 | 1.2.4.3.4.2 | Registro de recargas | 2h | 2017-07-03 10:00 | 2017-07-03 12:00 | 137 |  | 6.44d | 0d | 6h |  |
| 139 | 1.2.4.3.4.3 | Filtro periodo | 2h | 2017-07-03 12:00 | 2017-07-03 16:00 | 138 |  | 6.44d |  | 2h |  |
| 140 | 1.2.5 | **Pruebas generales completas** | 2.25d | 2017-07-03 16:00 | 2017-07-05 18:00 | 119 |  | 5.62d | 0d | 18h |  |
| 141 | 1.2.5.1 | **Pruebas unitarias** | 1.12d | 2017-07-03 16:00 | 2017-07-04 17:00 |  |  | 5.62d | 0d | 9h |  |
| 142 | 1.2.5.1.1 | Modulo cliente | 3h | 2017-07-03 16:00 | 2017-07-03 19:00 |  |  | 6.44d | 0d | 3h |  |
| 143 | 1.2.5.1.2 | Modulo distribuidor | 3h | 2017-07-04 09:00 | 2017-07-04 12:00 | 142 |  | 6.44d | 0d | 3h |  |
| 144 | 1.2.5.1.3 | Modulo administrador | 3h | 2017-07-04 12:00 | 2017-07-04 17:00 | 143 |  | 6.44d |  | 3h |  |
| 145 | 1.2.5.2 | **Pruebas Generales** | 1.12d | 2017-07-04 17:00 | 2017-07-05 18:00 | 141 |  | 5.62d |  | 9h |  |
| 146 | 1.2.5.2.1 | Modulo cliente | 3h | 2017-07-04 17:00 | 2017-07-05 10:00 |  |  | 6.44d | 0d | 3h |  |
| 147 | 1.2.5.2.2 | Modulo distribuidor | 3h | 2017-07-05 10:00 | 2017-07-05 13:00 | 146 |  | 6.44d | 0d | 3h |  |
| 148 | 1.2.5.2.3 | Modulo administrador | 3h | 2017-07-05 15:00 | 2017-07-05 18:00 | 147 |  | 6.44d |  | 3h |  |
| 149 | 1.2.6 | **Implementacion** | 2.75d | 2017-07-05 18:00 | 2017-07-10 16:00 | 140 |  | 5.62d |  | 22h |  |
| 150 | 1.2.6.1 | Guia de usuario | 4h | 2017-07-05 18:00 | 2017-07-06 12:00 |  |  | 6.44d | 0d | 4h |  |
| 151 | 1.2.6.2 | Guia de distribuidor | 4h | 2017-07-06 12:00 | 2017-07-06 18:00 | 150 |  | 6.44d | 0d | 4h |  |
| 152 | 1.2.6.3 | Guia de Administrador | 4h | 2017-07-06 18:00 | 2017-07-07 12:00 | 151 |  | 6.44d | 0d | 4h |  |
| 153 | 1.2.6.4 | **Despliegue** | 1.25d | 2017-07-07 12:00 | 2017-07-10 16:00 | 152 |  | 5.62d |  | 10h |  |
| 154 | 1.2.6.4.1 | Pase a produccion de base de datos | 3h | 2017-07-07 12:00 | 2017-07-07 17:00 |  |  | 6.44d | 0d | 3h |  |
| 155 | 1.2.6.4.2 | Pase a produccion de Aplicación | 3h | 2017-07-07 17:00 | 2017-07-10 10:00 | 154 |  | 6.44d | 0d | 3h |  |
| 156 | 1.2.6.4.3 | Pruebas finales | 4h | 2017-07-10 10:00 | 2017-07-10 16:00 | 155 |  | 6.44d |  | 4h |  |
| 157 | 1.3 | **Induccion personal** | 1d | 2017-07-10 16:00 A | 2017-07-11 16:00 A | 70 | 100% |  |  | 8h | 8h |
| 158 | 1.3.1 | Definicion de personal a capacitar | 2h | 2017-07-10 16:00 A | 2017-07-10 18:00 A |  | 100% |  |  | 2h | 2h |
| 159 | 1.3.2 | Realizar capacitacion | 4h | 2017-07-10 18:00 A | 2017-07-11 12:00 A | 158 | 100% |  |  | 4h | 4h |
| 160 | 1.3.3 | Resolver dudas adicionales | 2h | 2017-07-11 12:00 A | 2017-07-11 16:00 A | 159 | 100% |  |  | 2h | 2h |

| ID | WBS | Task | Duration | Start | Finish | Predecessors | Complete | Remaining | Total slack | Free slack | Work | Actual work |
| --- | --- | --- | --- | --- | --- | --- | --- | --- | --- | --- | --- | --- |
| 161 | 1.4 | **Procesamiento de Aseguramiento de la calidad de proyecto** | 1.5d | 2017-07-11 16:00 | 2017-07-13 10:00 | 157 |  |  | -39.12d | 0d | 12h |  |
| 162 | 1.4.1 | **Primera revision** | 0.25d | 2017-07-11 16:00 | 2017-07-11 18:00 |  |  |  | -39.12d | 0d | 2h |  |
| 163 | 1.4.1.1 | Elaboracion de CheckList | 1h | 2017-07-11 16:00 | 2017-07-11 17:00 |  |  |  | -39.12d | 0d | 1h |  |
| 164 | 1.4.1.2 | Documentar el ciclo de iteraccion | 1h | 2017-07-11 17:00 | 2017-07-11 18:00 | 163 |  |  | -39.12d | 0d | 1h |  |
| 165 | 1.4.2 | **Segunda revision** | 0.25d | 2017-07-11 18:00 | 2017-07-12 10:00 | 162 |  |  | -39.12d | 0d | 2h |  |
| 166 | 1.4.2.1 | Elaboracion de CheckList | 1h | 2017-07-11 18:00 | 2017-07-11 19:00 |  |  |  | -39.12d | 0d | 1h |  |
| 167 | 1.4.2.2 | Documentar el ciclo de iteraccion | 1h | 2017-07-12 09:00 | 2017-07-12 10:00 | 166 |  |  | -39.12d | 0d | 1h |  |
| 168 | 1.4.3 | **Tercera revision** | 0.25d | 2017-07-12 10:00 | 2017-07-12 12:00 | 165 |  |  | -39.12d | 0d | 2h |  |
| 169 | 1.4.3.1 | Elaboracion de CheckList | 1h | 2017-07-12 10:00 | 2017-07-12 11:00 |  |  |  | -39.12d | 0d | 1h |  |
| 170 | 1.4.3.2 | Documentar el ciclo de iteraccion | 1h | 2017-07-12 11:00 | 2017-07-12 12:00 | 169 |  |  | -39.12d | 0d | 1h |  |
| 171 | 1.4.4 | **Cuarta revision** | 0.25d | 2017-07-12 12:00 | 2017-07-12 16:00 | 168 |  |  | -39.12d | 0d | 2h |  |
| 172 | 1.4.4.1 | Elaboracion de CheckList | 1h | 2017-07-12 12:00 | 2017-07-12 13:00 |  |  |  | -39.12d | 0d | 1h |  |
| 173 | 1.4.4.2 | Documentar el ciclo de iteraccion | 1h | 2017-07-12 15:00 | 2017-07-12 16:00 | 172 |  |  | -39.12d | 0d | 1h |  |
| 174 | 1.4.5 | **Quinta revision** | 0.25d | 2017-07-12 16:00 | 2017-07-12 18:00 | 171 |  |  | -39.12d | 0d | 2h |  |
| 175 | 1.4.5.1 | Elaboracion de CheckList | 1h | 2017-07-12 16:00 | 2017-07-12 17:00 |  |  |  | -39.12d | 0d | 1h |  |
| 176 | 1.4.5.2 | Documentar el ciclo de iteraccion | 1h | 2017-07-12 17:00 | 2017-07-12 18:00 | 175 |  |  | -39.12d | 0d | 1h |  |
| 177 | 1.4.6 | **Sexta revision** | 0.25d | 2017-07-12 18:00 | 2017-07-13 10:00 | 174 |  |  | -39.12d | 0d | 2h |  |
| 178 | 1.4.6.1 | Elaboracion de CheckList | 1h | 2017-07-12 18:00 | 2017-07-12 19:00 |  |  |  | -39.12d | 0d | 1h |  |
| 179 | 1.4.6.2 | Documentar el ciclo de iteraccion | 1h | 2017-07-13 09:00 | 2017-07-13 10:00 | 178 |  |  | -39.12d | 0d | 1h |  |
| 180 | 1.5 | **Reuniones Internas** | 42.12d | 2017-05-19 09:00 A | 2017-07-18 10:00 | 161 | 17% | 35.1d | 0d |  | 6h | 1h |
| 181 | 1.5.1 | **reunion quincenal 1** | 0.12d | 2017-05-19 09:00 A | 2017-05-19 10:00 A |  | 100% |  |  |  | 1h | 1h |
| 182 | 1.5.1.1 | Acta de reunion | 1h | 2017-05-19 09:00 A | 2017-05-19 10:00 A |  | 100% |  |  |  | 1h | 1h |
| 183 | 1.5.2 | **reunion quincenal 2** | 0.12d | 2017-06-02 09:00 | 2017-06-02 10:00 | 181 |  |  |  |  | 1h |  |
| 184 | 1.5.2.1 | Acta de reunion | 1h | 2017-06-02 09:00 | 2017-06-02 10:00 |  |  |  | 0d |  | 1h |  |

| ID | WBS | Task | Duration | Start | Finish | Predecessors | Total slack | Work |
| --- | --- | --- | --- | --- | --- | --- | --- | --- |
| 185 | 1.5.3 | **reunion quincenal 3** | 0.12d | 2017-06-16 09:00 | 2017-06-16 10:00 | 183 |  | 1h |
| 186 | 1.5.3.1 | Acta de reunion | 1h | 2017-06-16 09:00 | 2017-06-16 10:00 |  | 0d | 1h |
| 187 | 1.5.4 | **reunion quincenal 4** | 0.12d | 2017-06-30 09:00 | 2017-06-30 10:00 | 185 |  | 1h |
| 188 | 1.5.4.1 | Acta de reunion | 1h | 2017-06-30 09:00 | 2017-06-30 10:00 |  | 0d | 1h |
| 189 | 1.5.5 | **reunion quincenal 5** | 0.12d | 2017-07-14 09:00 | 2017-07-14 10:00 |  |  | 1h |
| 190 | 1.5.5.1 | Acta de reunion | 1h | 2017-07-14 09:00 | 2017-07-14 10:00 |  | 0d | 1h |
| 191 | 1.5.6 | **reunion quincenal 6** | 0.12d | 2017-07-18 09:00 | 2017-07-18 10:00 |  |  | 1h |
| 192 | 1.5.6.1 | Acta de reunion | 1h | 2017-07-18 09:00 | 2017-07-18 10:00 |  | 0d | 1h |
| 193 | 1.6 | **Reuniones externas** | 0.12d | 2017-07-18 10:00 | 2017-07-18 11:00 | 180 | 0d | 1.5h |
| 194 | 1.6.1 | **Primera reunion** | 0.06d | 2017-07-18 10:00 | 2017-07-18 10:30 |  | 0d | 0.5h |
| 195 | 1.6.1.1 | Acta de reunion y obbservaciones | 0.5h | 2017-07-18 10:00 | 2017-07-18 10:30 |  | 0d | 0.5h |
| 196 | 1.6.2 | **Segunda reunion** | 0.06d | 2017-07-18 10:30 | 2017-07-18 11:00 | 194 | 0d | 0.5h |
| 197 | 1.6.2.1 | Acta de reunion y obbservaciones | 0.5h | 2017-07-18 10:30 | 2017-07-18 11:00 |  | 0d | 0.5h |
| 198 | 1.6.3 | **tercera reunion** | 0.06d | 2017-07-18 10:00 | 2017-07-18 10:30 |  | 0.06d | 0.5h |
| 199 | 1.6.3.1 | Acta de reunion y obbservaciones | 0.5h | 2017-07-18 10:00 | 2017-07-18 10:30 |  | 0.06d | 0.5h |
